# 2023%20Projects

How a schedule from MS Project changed from version to version. A marks actual dates.

## Version 1 (saved 2023-02-23, file 2023 Projects.mpp)

Note of the change: Added source files to CEA_Project

| ID | WBS | Task | Duration | Start | Finish | Predecessors | Complete | Total float | Constraint |
| --- | --- | --- | --- | --- | --- | --- | --- | --- | --- |
| 1 | 1 | **ICT Projects** | 282d? | 2023-01-01 A | 2023-12-31 |  | 1% | 0d |  |
| 2 | 1.1 | **AMS Projects** | 111d? | 2023-01-01 A | 2023-05-16 |  | 6% | 171d |  |
| 3 | 1.1.1 | **Singapore-Inventory Module Implementation for Consumable Items** | 70d | 2023-01-02 | 2023-03-29 |  | 14% |  |  |
| 4 |  | Requirements Gethering from the users | 15d | 2023-01-01 A | 2023-01-19 |  | 45% | 235d |  |
| 5 |  | System Setup | 4d | 2023-01-20 | 2023-01-25 | 4 |  | 234d |  |
| 6 |  | Conference Room Pilot (CRP) | 6d | 2023-01-26 | 2023-02-01 | 5 |  | 234d |  |
| 7 |  | Data Conversion | 3d | 2023-02-02 | 2023-02-06 | 6 |  | 234d |  |
| 8 |  | User Training | 2d | 2023-02-07 | 2023-02-08 | 7 |  | 234d |  |
| 9 |  | User Testing | 7d | 2023-02-09 | 2023-02-17 | 8 |  | 234d |  |
| 10 |  | Issues Resolution | 3d | 2023-02-19 | 2023-02-21 | 9 |  | 235d |  |
| 11 |  | Report Development | 5d | 2023-02-22 | 2023-02-28 | 10 |  | 235d |  |
| 12 |  | Move Setup to Live Environment | 1d | 2023-03-01 | 2023-03-01 | 11 |  | 235d |  |
| 13 |  | Go Live and Project Sign Off | 1d | 2023-03-02 | 2023-03-02 | 12 |  | 235d |  |
| 14 | 1.1.2 | **CEA Rewrite** | 83d | 2023-02-07 A | 2023-05-16 |  | 3% | 171d |  |
| 15 | 1.1.2.1 | **Analysis Phase** | 6d | 2023-02-07 A | 2023-02-14 |  | 50% | 198d |  |
| 16 |  | SRS Documentation | 6d | 2023-02-07 A | 2023-02-14 |  | 50% | 198d | start no earlier than 2023-02-06 |
| 17 |  | Design Phase | 4d | 2023-02-15 | 2023-02-19 | 15 |  | 198d | finish no earlier than 2023-02-19 |
| 18 |  | Database Design | 3d | 2023-02-20 | 2023-02-22 | 17 |  | 198d |  |
| 19 | 1.1.2.4 | **Coding** | 47d | 2023-02-23 | 2023-04-19 | 18 |  | 194d |  |
| 20 | 1.1.2.4.1 | **User Functions** | 47d | 2023-02-23 | 2023-04-19 |  |  | 194d |  |
| 21 |  | Project Inquiry | 4d | 2023-02-23 | 2023-02-28 |  |  | 198d | start no earlier than 2023-02-23 |
| 22 |  | Project Details Management | 4d | 2023-03-01 | 2023-03-05 | 21 |  | 198d | start no earlier than 2023-03-01 |
| 23 |  | Requisition Inquiry | 4d | 2023-03-06 | 2023-03-09 | 22 |  | 198d | start no earlier than 2023-03-06 |
| 24 |  | Requisition Entry | 5d | 2023-03-12 | 2023-03-16 | 23 |  | 197d | start no earlier than 2023-03-12 |
| 25 |  | Requisition Status View | 4d | 2023-03-19 | 2023-03-22 | 24 |  | 196d | finish no earlier than 2023-03-22 |
| 26 |  | Requisition Expenses View | 4d | 2023-03-24 | 2023-03-28 | 25 |  | 195d | finish no earlier than 2023-03-28 |
| 27 |  | Requisition Status Management | 5d | 2023-03-29 | 2023-04-03 | 26 |  | 195d | finish no earlier than 2023-04-03 |
| 28 |  | Employee Lookup | 5d | 2023-04-04 | 2023-04-09 | 27 |  | 195d | start no earlier than 2023-04-04 |
| 29 |  | Equipment Lookup | 4d | 2023-04-10 | 2023-04-13 | 28 |  | 195d |  |
| 30 |  | Upload Attachment Management | 4d | 2023-04-16 | 2023-04-19 | 29 |  | 194d | start no earlier than 2023-04-16 |
| 31 | 1.1.2.4.2 | **Report Functions** | 21d | 2023-02-23 | 2023-03-20 |  |  | 203d |  |
| 32 | 1.1.2.4.2.1 | **Detailed Expense Report** | 6d | 2023-02-23 | 2023-03-02 |  |  | 205d |  |
| 33 |  | Inquiry Form | 4d | 2023-02-23 | 2023-02-28 |  |  | 205d | start no earlier than 2023-02-12 |
| 34 |  | Report Document | 2d | 2023-03-01 | 2023-03-02 | 33 |  | 205d | start no earlier than 2023-02-28 |
| 35 | 1.1.2.4.2.2 | **Expenses Report Summary** | 7d | 2023-03-05 | 2023-03-12 | 32 |  | 204d |  |
| 36 |  | Inquiry Form | 4d | 2023-03-05 | 2023-03-08 |  |  | 204d | start no earlier than 2023-03-05 |
| 37 |  | Report Document | 3d | 2023-03-09 | 2023-03-12 | 36 |  | 204d | start no earlier than 2023-03-09 |
| 38 | 1.1.2.4.2.3 | **Requisition Report** | 7d | 2023-03-13 | 2023-03-20 | 35 |  | 203d |  |
| 39 |  | Inquiry Form | 4d | 2023-03-13 | 2023-03-16 |  |  | 204d | start no earlier than 2023-03-12 |
| 40 |  | Report Document | 2d | 2023-03-19 | 2023-03-20 | 39 |  | 203d | start no earlier than 2023-03-19 |
| 41 | 1.1.2.4.3 | **Administrative Functions** | 17d | 2023-03-21 | 2023-04-09 | 31 |  | 203d |  |
| 42 |  | Requisition Posting/Closure Management | 6d | 2023-03-21 | 2023-03-27 |  |  | 203d | start no earlier than 2023-03-15 |
| 43 |  | Equipment Number Assignment | 5d | 2023-03-28 | 2023-04-02 | 42 |  | 203d | finish no earlier than 2023-04-02 |
| 44 |  | Upload Project Setup | 6d | 2023-04-03 | 2023-04-09 | 43 |  | 203d | start no earlier than 2023-04-03 |
| 45 |  | Workflow Implementation | 9d | 2023-04-20 | 2023-04-30 |  |  | 185d | start no earlier than 2023-04-20 |
| 46 | 1.1.2.6 | **Testing Phase** | 8d | 2023-05-02 | 2023-05-10 |  |  |  |  |
| 47 |  | Functional Test | 3d | 2023-05-02 | 2023-05-04 |  |  | 177d | start no earlier than 2023-05-02 |
| 48 |  | Load Test | 2d | 2023-05-07 | 2023-05-08 | 47 |  | 176d | start no earlier than 2023-05-07 |
| 49 |  | System Test | 2d | 2023-05-09 | 2023-05-10 | 48 |  | 176d | start no earlier than 2023-05-02 |
| 50 |  | Documentation | 4d | 2023-05-11 | 2023-05-15 | 46 |  | 171d | start no earlier than 2023-05-03 |
| 51 |  | Deployment & User Acceptance | 1d | 2023-05-16 | 2023-05-16 | 50 |  | 171d |  |
| 52 | 1.1.3 | **Service Desk Implementation** | 1d? | 2023-01-02 | 2023-01-02 |  |  |  |  |
| 53 |  | R&D | 1d? | 2023-01-02 | 2023-01-02 |  |  |  |  |
| 54 |  | Analysis Phase | 1d? | 2023-01-02 | 2023-01-02 |  |  |  |  |
| 55 |  | Design Phase | 1d? | 2023-01-02 | 2023-01-02 |  |  |  |  |
| 56 |  | Development Phase | 1d? | 2023-01-02 | 2023-01-02 |  |  |  |  |
| 57 |  | Testing Phase | 1d? | 2023-01-02 | 2023-01-02 |  |  |  |  |
| 58 |  | Documentation | 1d? | 2023-01-02 | 2023-01-02 |  |  |  |  |
| 59 |  | Deployment & User Acceptance | 1d? | 2023-01-02 | 2023-01-02 |  |  |  |  |
| 60 | 1.2 | **PMS Projects** | 282d? | 2023-01-02 | 2023-12-31 |  |  | 0d |  |
| 61 | 1.2.1 | **Resolution project for SRC length limitation** | 282d? | 2023-01-02 | 2023-12-31 |  |  | 0d |  |
| 62 |  | AD | 22d? | 2023-01-02 | 2023-01-29 |  |  | 218d | start no earlier than 2023-01-02 |
| 63 |  | CAT | 42d? | 2023-02-01 | 2023-03-24 | 62 |  | 216d | start no earlier than 2023-02-01 |
| 64 |  | UT/IT | 65d? | 2023-04-12 | 2023-06-29 |  |  | 136d | finish no earlier than 2023-06-29 |
| 65 |  | UAT - Test Environment | 64d? | 2023-07-05 | 2023-09-28 |  |  | 68d | finish no earlier than 2023-09-28 |
| 66 |  | UAT/GoLive - Production Environment | 67d? | 2023-10-01 | 2023-12-31 |  |  | 0d | finish no earlier than 2023-12-31 |
| 67 | 1.2.2 | **AF#2, SFDC+HMI Integration** | 61d? | 2023-01-15 | 2023-03-30 |  |  | 211d |  |
| 68 |  | AD | 10d? | 2023-01-15 | 2023-01-26 |  |  | 262d | finish no earlier than 2023-01-26 |
| 69 |  | CAT | 23d? | 2023-01-30 | 2023-02-28 |  |  | 225d | finish no earlier than 2023-02-28 |
| 70 |  | UT/IT | 12d? | 2023-03-01 | 2023-03-14 | 69 |  | 225d | start no earlier than 2023-03-01 |

| ID | WBS | Task | Duration | Start | Finish | Predecessors | Total float | Constraint |
| --- | --- | --- | --- | --- | --- | --- | --- | --- |
| 71 |  | UAT | 10d? | 2023-03-20 | 2023-03-30 |  | 211d | finish no earlier than 2023-03-30 |
| 72 | 1.2.3 | **SFDC for Continuous Caster #1** | 139d? | 2023-04-05 | 2023-09-28 |  | 68d |  |
| 73 |  | AD | 20d? | 2023-04-05 | 2023-04-27 |  | 187d | finish no earlier than 2023-04-27 |
| 74 |  | CAT | 70d? | 2023-05-07 | 2023-08-03 |  | 110d | finish no earlier than 2023-08-03 |
| 75 |  | UT/IT | 20d? | 2023-08-06 | 2023-08-31 |  | 89d | finish no earlier than 2023-08-31 |
| 76 |  | UAT | 20d? | 2023-09-03 | 2023-09-28 |  | 68d | finish no earlier than 2023-09-28 |
| 77 | 1.3 | **Database Projects** | 282d | 2023-01-02 | 2023-12-31 |  |  |  |
| 78 | 1.3.1 | **Database Reporting Dashboard** | 52d | 2023-04-02 | 2023-05-31 |  |  |  |
| 79 |  | Concurrent connected users | 3d? | 2023-04-02 | 2023-04-04 |  | 200d | finish no earlier than 2023-04-04 |
| 80 |  | Database runtime errors log | 4d? | 2023-04-05 | 2023-04-09 | 79 | 200d | finish no earlier than 2023-04-09 |
| 81 |  | Active user's list | 3d | 2023-04-10 | 2023-04-12 | 80 |  | finish no earlier than 2023-04-12 |
| 82 |  | Backup Status | 4d? | 2023-04-13 | 2023-04-17 |  | 193d | finish no earlier than 2023-04-17 |
| 83 |  | Audit reports | 3d? | 2023-04-18 | 2023-04-20 | 82 | 193d | finish no earlier than 2023-04-20 |
| 84 |  | Plant database avalabiliry status | 4d? | 2023-04-30 | 2023-05-03 |  | 182d | finish no earlier than 2023-05-03 |
| 85 |  | New database objects list | 4d? | 2023-05-04 | 2023-05-08 |  | 178d | finish no earlier than 2023-05-08 |
| 86 |  | User permissions | 3d? | 2023-05-09 | 2023-05-11 |  | 175d | finish no earlier than 2023-05-11 |
| 87 |  | Patches installed | 2d? | 2023-05-14 | 2023-05-15 |  | 172d | finish no earlier than 2023-05-15 |
| 88 |  | Database scheduled Jobs failed | 2d? | 2023-05-16 | 2023-05-17 |  | 170d | finish no earlier than 2023-05-17 |
| 89 |  | Compare users permissions | 3d? | 2023-05-18 | 2023-05-21 |  | 167d | finish no earlier than 2023-05-21 |
| 90 |  | Locked sessions and objects | 2d? | 2023-05-23 | 2023-05-24 |  | 164d | start no earlier than 2023-05-23 |
| 91 |  | Current load on databases | 3d? | 2023-05-25 | 2023-05-28 |  | 161d | start no earlier than 2023-05-25 |
| 92 |  | Running queries on database | 2d? | 2023-05-30 | 2023-05-31 |  | 158d | start no earlier than 2023-05-30 |
| 93 | 1.3.2 | **Performance Enhancements** | 71d | 2023-01-02 | 2023-03-30 |  |  |  |
| 94 |  | Data archieveing (MSSQL & Oralce) | 5d | 2023-02-12 | 2023-02-16 |  |  | start no earlier than 2023-02-12 |
| 95 |  | Index analysis / Reorganize / Rebuild | 3d | 2023-02-19 | 2023-02-21 |  |  | start no earlier than 2023-02-19 |
| 96 |  | Analyse and tune excessive CPU usage | 3d? | 2023-02-22 | 2023-02-26 |  | 239d | finish no earlier than 2023-02-26 |
| 97 |  | Reclaim unused space | 2d? | 2023-02-27 | 2023-02-28 |  | 237d | finish no earlier than 2023-02-28 |
| 98 |  | Minimizing the wait events | 8d? | 2023-03-01 | 2023-03-09 |  | 229d | finish no earlier than 2023-03-09 |
| 99 |  | Priodic Study of AWR and ASH reports | 70d? | 2023-01-03 | 2023-03-30 |  | 211d | finish no earlier than 2023-03-30 |
| 100 |  | Tune up long running queries | 15d? | 2023-03-12 | 2023-03-28 |  | 213d | finish no earlier than 2023-03-28 |
| 101 | 1.3.3 | **SQL Server Upgrade to 2019** | 67d | 2023-07-02 | 2023-09-28 |  |  |  |
| 102 |  | Upgrade development environment and test applications | 22d? | 2023-07-02 | 2023-07-31 |  | 113d | finish no earlier than 2023-07-31 |
| 103 | 1.3.3.2 | **Prepare the production environment** | 24d | 2023-08-01 | 2023-08-31 |  |  |  |
| 104 |  | Install additional windows features | 2d? | 2023-08-01 | 2023-08-02 |  | 111d | finish no earlier than 2023-08-02 |
| 105 |  | Install SQL Server with required features | 3d? | 2023-08-03 | 2023-08-06 |  | 108d | finish no earlier than 2023-08-06 |
| 106 |  | Copy logins and databases | 1d? | 2023-08-07 | 2023-08-07 |  | 107d | finish no earlier than 2023-08-07 |
| 107 |  | Copy SQL server's scheduled jobs, window scheduled tasks and scripts | 1d? | 2023-08-08 | 2023-08-08 |  | 106d | finish no earlier than 2023-08-08 |
| 108 |  | Modify Oracle's databse links to point new server | 1d? | 2023-08-09 | 2023-08-09 |  | 105d | finish no earlier than 2023-08-09 |
| 109 |  | Copy and compare permissions for users | 1d? | 2023-08-10 | 2023-08-10 |  | 104d | finish no earlier than 2023-08-10 |
| 110 |  | Schedule backups through maintenance plans | 1d? | 2023-08-10 | 2023-08-10 |  | 104d | finish no earlier than 2023-08-10 |
| 111 |  | Throughly test database of application & administration tasks | 14d? | 2023-08-14 | 2023-08-31 |  | 89d | start no earlier than 2023-08-13 |
| 112 |  | Audit licence and features used | 1d? | 2023-08-14 | 2023-08-14 |  | 102d | finish no earlier than 2023-08-14 |
| 113 | 1.3.3.3 | **Prepare the standby environment** | 17d | 2023-09-03 | 2023-09-25 |  |  |  |
| 114 |  | Standby server using AlwaysOn technology | 4d? | 2023-09-03 | 2023-09-06 |  | 84d | finish no earlier than 2023-09-06 |
| 115 |  | Windows failover cluster feature installation | 4d? | 2023-09-07 | 2023-09-12 |  | 80d | finish no earlier than 2023-09-12 |
| 116 |  | FCI configuration for AlwaysOn groups | 2d? | 2023-09-13 | 2023-09-14 |  | 78d | finish no earlier than 2023-09-14 |
| 117 |  | Change recovery mode for all database | 1d? | 2023-09-18 | 2023-09-18 |  | 76d | finish no earlier than 2023-09-18 |
| 118 |  | Enable AlwaysON on both nodes | 3d? | 2023-09-19 | 2023-09-21 |  | 73d | start no earlier than 2023-09-19 |
| 119 |  | AlwaysOn testing (Switch over / Fail over) | 1d? | 2023-09-25 | 2023-09-25 |  | 71d | finish no earlier than 2023-09-25 |
| 120 | 1.3.3.4 | **Go LIVE** | 4d | 2023-09-25 | 2023-09-28 |  |  |  |
| 121 |  | Prepare live server and refresh standby | 1d | 2023-09-25 | 2023-09-25 |  |  | start no earlier than 2023-09-25 |
| 122 |  | Prepare to do list and schedule go LIVE | 1d? | 2023-09-26 | 2023-09-26 |  | 70d | finish no earlier than 2023-09-26 |
| 123 |  | Post implementation verification list | 1d? | 2023-09-26 | 2023-09-26 |  | 70d | finish no earlier than 2023-09-26 |
| 124 |  | Determine the upgrade acceptace criteria | 1d? | 2023-09-26 | 2023-09-26 |  | 70d | finish no earlier than 2023-09-26 |
| 125 |  | Plan Go Live with minimize downtime | 1d? | 2023-09-27 | 2023-09-27 |  | 69d | finish no earlier than 2023-09-27 |
| 126 |  | GO LIVE | 1d? | 2023-09-28 | 2023-09-28 |  | 68d | start no earlier than 2023-09-28 |
| 127 | 1.3.4 | **Failover / Switchover of Database** | 282d | 2023-01-02 | 2023-12-31 |  |  |  |
| 128 |  | Q1 - Failover MSSQL Database | 2d? | 2023-03-08 | 2023-03-09 |  | 229d | finish no earlier than 2023-03-09 |
| 129 |  | Q2 - Switchover Oracle Database | 2d? | 2023-05-17 | 2023-05-18 |  | 169d | finish no earlier than 2023-05-18 |
| 130 |  | Q3 - Failover MSSQL Database | 2d? | 2023-09-13 | 2023-09-14 |  | 78d | finish no earlier than 2023-09-14 |
| 131 |  | Q4 - Switchover Oracle Database | 2d? | 2023-12-20 | 2023-12-21 |  | 7d | finish no earlier than 2023-12-21 |
| 132 | 1.3.5 | **Backup Management and Restoration Tests** | 282d | 2023-01-02 | 2023-12-31 |  |  |  |
| 133 | 1.3.5.1 | **Phase 1 [Q2]** | 71d | 2023-01-02 | 2023-03-30 |  |  |  |
| 134 |  | Daily monitoring of backup logs | 70d? | 2023-01-03 | 2023-03-30 |  | 211d | finish no earlier than 2023-03-30 |
| 135 |  | Restore and recover all mssql databases upto last transaction log | 1d? | 2023-02-15 | 2023-02-15 |  | 247d | start no earlier than 2023-02-15 |
| 136 |  | Restore and recover all databases uptp a given point in time | 1d? | 2023-02-22 | 2023-02-22 |  | 241d | start no earlier than 2023-02-22 |
| 137 | 1.3.5.2 | **Phase 2 [Q3]** | 74d? | 2023-04-02 | 2023-06-29 |  | 136d |  |
| 138 |  | Daily monitoring of backup logs | 74d? | 2023-04-02 | 2023-06-29 |  | 136d | finish no earlier than 2023-06-29 |
| 139 |  | Recover from missing SPFile | 1d? | 2023-04-10 | 2023-04-10 |  | 202d | start no earlier than 2023-04-10 |
| 140 |  | Recover from loss of single/all control file(s) | 2d? | 2023-04-25 | 2023-04-26 |  | 188d | finish no earlier than 2023-04-26 |

| ID | WBS | Task | Duration | Start | Finish | Predecessors | Complete | Total float | Constraint |
| --- | --- | --- | --- | --- | --- | --- | --- | --- | --- |
| 141 |  | Recover from the loss of system data file / tablespace | 3d? | 2023-05-15 | 2023-05-17 |  |  | 170d | finish no earlier than 2023-05-17 |
| 142 | 1.3.5.3 | **Phase 3 [Q4]** | 67d | 2023-07-02 | 2023-09-28 |  |  |  |  |
| 143 |  | Daily monitoring of backup logs | 67d? | 2023-07-02 | 2023-09-28 |  |  | 68d | start no earlier than 2023-07-02 |
| 144 |  | Recover from the loss of user data file / tablespace | 3d? | 2023-07-04 | 2023-07-06 |  |  | 130d | finish no earlier than 2023-07-06 |
| 145 |  | Recovery from redo log file loss | 3d? | 2023-08-15 | 2023-08-17 |  |  | 99d | finish no earlier than 2023-08-17 |
| 146 |  | Restore entire database from RMAN backup | 3d? | 2023-09-11 | 2023-09-13 |  |  | 79d | finish no earlier than 2023-09-13 |
| 147 | 1.3.5.4 | **Phase 4 [Q4]** | 67d | 2023-10-01 | 2023-12-31 |  |  |  |  |
| 148 |  | Daily monitoring of backup logs | 67d? | 2023-10-01 | 2023-12-31 |  |  | 0d | finish no earlier than 2023-12-31 |
| 149 |  | Recover table data from data dumps | 2d? | 2023-10-16 | 2023-10-17 |  |  | 54d | finish no earlier than 2023-10-17 |
| 150 |  | Recover old scripts from data dumps | 2d? | 2023-11-21 | 2023-11-22 |  |  | 28d | finish no earlier than 2023-11-22 |
| 151 |  | Recover entire schema from data dumps | 4d? | 2023-12-11 | 2023-12-14 |  |  | 12d | finish no earlier than 2023-12-14 |
| 152 | 1.4 | **Infrastructure Projects** | 85d | 2023-01-02 A | 2023-04-16 |  | 2% | 197d |  |
| 153 | 1.4.1 | **Network seggregation - OT and IT (Firewall installation)** | 40d | 2023-03-01 | 2023-04-16 |  |  | 197d |  |
| 154 |  | Hot Mill and SHF | 10d | 2023-03-01 | 2023-03-12 |  |  | 197d | start no earlier than 2023-03-01 |
| 155 |  | Cold Mills | 10d | 2023-03-13 | 2023-03-23 | 154 |  | 197d | start no earlier than 2021-03-22 |
| 156 |  | Finishing | 10d | 2023-03-24 | 2023-04-04 | 155 |  | 197d |  |
| 157 |  | Remelt | 10d | 2023-04-05 | 2023-04-16 | 156 |  | 197d |  |
| 158 | 1.4.2 | **Network Switch replacement** | 22d | 2023-01-02 A | 2023-01-29 |  | 10% | 260d |  |
| 159 |  | Admin departments | 2d | 2023-01-02 A | 2023-01-03 |  | 30% | 14.2d | start no earlier than 2022-04-04 |
| 160 |  | Engineering department | 2d | 2023-01-22 A | 2023-01-24 | 159 | 10% | 260d | start no earlier than 2021-03-22 |
| 161 |  | Plant area | 2d | 2023-01-25 | 2023-01-26 | 160 |  | 260d |  |
| 162 |  | Foil Mill Area | 2d | 2023-01-27 | 2023-01-29 | 161 |  | 260d |  |
| 163 | 1.5 | **General Projects** | 1d? | 2023-01-23 | 2023-01-23 |  |  | 265d |  |
| 164 | 1.5.1 | **Disaster Recovery testing** | 1d? | 2023-01-23 | 2023-01-23 |  |  | 265d |  |
| 165 | 1.5.1.1 | **Perform recovery testing of AMS servers** | 1d? | 2023-01-23 | 2023-01-23 |  |  | 265d |  |
| 166 |  | SWITCHOVER (MS SQL Database) | 1d | 2023-01-23 | 2023-01-23 |  |  | 265d |  |
| 167 |  | SWITCHBACK (MS SQL Database) | 1d? | 2023-01-23 | 2023-01-23 |  |  | 265d |  |
| 168 | 1.5.1.2 | **Perform recovery testing of PMS servers** | 1d | 2023-01-23 | 2023-01-23 |  |  | 265d |  |
| 169 |  | SWITCHOVER (Oracle Database) | 1d | 2023-01-23 | 2023-01-23 |  |  | 265d |  |
| 170 |  | SWITCHBACK (Oracle Database) | 1d | 2023-01-23 | 2023-01-23 |  |  | 265d |  |
| 171 |  | Perform recovery testing of Infrastructure servers | 1d | 2023-01-23 | 2023-01-23 |  |  | 265d |  |
| 172 | 1.5.2 | **Phishing Training implementation - KnowBe4** | 1d | 2023-01-23 | 2023-01-23 |  |  | 265d |  |
| 173 |  | Setup the Knowbe4 console with training modules | 1d | 2023-01-23 | 2023-01-23 |  |  | 265d |  |
| 174 |  | User training and implementation for training on Phishing | 1d | 2023-01-23 | 2023-01-23 |  |  | 265d |  |
| 175 | 1.6 | **Audit and Compliance** | 1d? | 2023-01-23 | 2023-01-23 |  |  | 265d |  |
| 176 |  | Implement recommendations of TUV | 1d? | 2023-01-23 | 2023-01-23 |  |  | 265d |  |
| 177 |  | Implement recommendations of DELLOITE | 1d? | 2023-01-23 | 2023-01-23 |  |  | 265d |  |
| 178 |  | Implement recommendations of KPMG | 1d? | 2023-01-23 | 2023-01-23 |  |  | 265d |  |
| 179 |  | Vulnerability and Penetration Testing | 1d? | 2023-01-23 | 2023-01-23 |  |  | 265d |  |

## Version 2 (saved 2023-02-23, file 2023 Projects - New.mpp)

Note of the change: Added source files to CEA_Project

Last finish stays 2023-12-31. Complete tasks 0 → 3.

Added:

| ID | Task | Duration | Start | Finish | Predecessors | Constraint | Resources |
| --- | --- | --- | --- | --- | --- | --- | --- |
| 24 | Requisition Details | 6d | 2023-03-19 | 2023-03-24 | 23 | start no earlier than 2023-03-19 |  |
| 42 | Requisition Posting | 6d | 2023-03-22 | 2023-03-28 |  | start no earlier than 2023-03-15 |  |
| 45 | CEA Closure | 6d | 2023-04-11 | 2023-04-17 | 44 |  |  |
| 46 | **Workflow Implementation** | 16d | 2023-04-30 | 2023-05-17 |  |  | Ervin Brosas |
| 47 | CEA Requsition Approval Cycle | 8d | 2023-04-30 | 2023-05-08 |  | start no earlier than 2023-04-30 |  |
| 48 | Automation of Assets Acquisition in JDE | 8d | 2023-05-09 | 2023-05-17 | 47 |  |  |
| 166 | **Network monitoring tool implementation** | 40d | 2023-03-15 | 2023-04-30 |  |  | Nagendra Seetharam; Rashed Waqar; Sreejith Krishnan |
| 167 | Identify product | 10d | 2023-03-15 | 2023-03-26 |  | start no earlier than 2023-03-15 | Nagendra Seetharam [300%]; Rashed Waqar [300%]; Sreejith Krishnan [300%] |
| 168 | Perform POC | 10d | 2023-03-27 | 2023-04-06 | 167 | start no earlier than 2021-03-22 | Nagendra Seetharam [300%]; Rashed Waqar [300%]; Sreejith Krishnan [300%] |
| 169 | Create PR | 10d | 2023-04-07 | 2023-04-18 | 168 |  | Nagendra Seetharam; Rashed Waqar; Sreejith Krishnan |
| 170 | Install and implement | 10d | 2023-04-19 | 2023-04-30 | 169 |  | Nagendra Seetharam [200%]; Rashed Waqar [200%]; Sreejith Krishnan [200%] |

Removed: 24 Requisition Entry; 42 Requisition Posting/Closure Management; 45 Workflow Implementation

Changed:

| ID | Task | Start | Finish | Duration | Complete | Total float | Predecessors | Other |
| --- | --- | --- | --- | --- | --- | --- | --- | --- |
| 1 | **ICT Projects** | 2023-01-01 A → 2023-01-02 A (+1d) |  |  | 1% → 2% |  |  |  |
| 2 | **AMS Projects** | 2023-01-01 A → 2023-02-01 A (+31d) | 2023-05-16 → 2023-05-31 (+15d) | 111d? → 100d? | 6% → 11% | 171d → 158d |  |  |
| 3 | **Singapore-Inventory Module Implementation for Consumable Items** | 2023-01-02 → 2023-02-01 A (+30d) | 2023-03-29 → 2023-04-20 (+22d) | 70d → 64.9d | 14% → 16% | none → 193.1d |  |  |
| 4 | Requirements Gethering from the users | 2023-01-01 A → 2023-02-01 A (+31d) | 2023-01-19 → 2023-02-21 (+33d) |  |  | 235d → 1d |  |  |
| 5 | System Setup | 2023-01-20 → 2023-02-21 A (+32d) | 2023-01-25 → 2023-03-01 (+35d) | 4d → 8d | 0% → 25% | 234d → 0d |  |  |
| 6 | Conference Room Pilot (CRP) | 2023-01-26 → 2023-02-25 A (+30d) | 2023-02-01 → 2023-03-08 (+35d) | 6d → 8d | 0% → 26% | 234d → 193.1d |  |  |
| 7 | Data Conversion | 2023-02-02 → 2023-03-08 (+34d) | 2023-02-06 → 2023-03-13 (+35d) | 3d → 4d |  | 234d → 193.1d |  |  |
| 8 | User Training | 2023-02-07 → 2023-03-13 (+34d) | 2023-02-08 → 2023-03-17 (+37d) | 2d → 4d |  | 234d → 193.1d |  |  |
| 9 | User Testing | 2023-02-09 → 2023-03-17 (+36d) | 2023-02-17 → 2023-04-03 (+45d) | 7d → 14d |  | 234d → 193.1d |  |  |
| 10 | Issues Resolution | 2023-02-19 → 2023-04-03 (+43d) | 2023-02-21 → 2023-04-06 (+44d) |  |  | 235d → 193.1d |  |  |
| 11 | Report Development | 2023-02-22 → 2023-04-06 (+43d) | 2023-02-28 → 2023-04-16 (+47d) | 5d → 8d |  | 235d → 193.1d |  |  |
| 12 | Move Setup to Live Environment | 2023-03-01 → 2023-04-16 (+46d) | 2023-03-01 → 2023-04-18 (+48d) | 1d → 2d |  | 235d → 193.1d |  |  |
| 13 | Go Live and Project Sign Off | 2023-03-02 → 2023-04-18 (+47d) | 2023-03-02 → 2023-04-20 (+49d) | 1d → 2d |  | 235d → 193.1d |  |  |
| 14 | **CEA Rewrite** |  | 2023-05-16 → 2023-05-31 (+15d) | 83d → 96d | 3% → 9% | 171d → 158d |  |  |
| 15 | **Analysis Phase** |  | 2023-02-14 A |  | 50% → 100% | 198d → none |  |  |
| 16 | SRS Documentation |  | 2023-02-14 A |  | 50% → 100% | 198d → none |  |  |
| 17 | Design Phase | 2023-02-15 A | 2023-02-19 → 2023-02-20 A (+1d) |  | 0% → 100% | 198d → none |  |  |
| 18 | Database Design | 2023-02-20 → 2023-02-21 A (+1d) | 2023-02-22 → 2023-02-23 (+1d) |  | 0% → 50% | 198d → 192d |  |  |
| 19 | **Coding** | 2023-02-23 → 2023-02-26 (+3d) | 2023-04-19 → 2023-05-17 (+28d) | 47d → 70d |  | 194d → 170d |  |  |
| 20 | **User Functions** | 2023-02-23 → 2023-02-26 (+3d) | 2023-04-19 → 2023-04-27 (+8d) | 47d → 53d |  | 194d → 187d |  | resources none → Ervin Brosas |
| 21 | Project Inquiry | 2023-02-23 → 2023-02-26 (+3d) | 2023-02-28 → 2023-03-02 (+2d) | 4d → 5d |  | 198d → 191d |  | constraint start no earlier than 2023-02-23 → start no earlier than 2023-02-26; resources Ervin Brosas → none |
| 22 | Project Details Management | 2023-03-01 → 2023-03-05 (+4d) | 2023-03-05 → 2023-03-09 (+4d) | 4d → 5d |  | 198d → 190d |  | constraint start no earlier than 2023-03-01 → start no earlier than 2023-03-05; resources Ervin Brosas → none |
| 23 | Requisition Inquiry | 2023-03-06 → 2023-03-12 (+6d) | 2023-03-09 → 2023-03-16 (+7d) | 4d → 5d |  | 198d → 189d |  | constraint start no earlier than 2023-03-06 → start no earlier than 2023-03-12; resources Ervin Brosas → none |
| 25 | Requisition Status View | 2023-03-19 → 2023-03-26 (+7d) | 2023-03-22 → 2023-03-29 (+7d) |  |  | 196d → 188d | Requisition Entry → 24 | resources Ervin Brosas → none |
| 26 | Requisition Expenses View | 2023-03-24 → 2023-03-30 (+6d) | 2023-03-28 → 2023-04-04 (+7d) | 4d → 5d |  | 195d → 188d |  | constraint finish no earlier than 2023-03-28 → finish no earlier than 2023-04-02; resources Ervin Brosas → none |
| 27 | Requisition Status Management | 2023-03-29 → 2023-04-05 (+7d) | 2023-04-03 → 2023-04-10 (+7d) |  |  | 195d → 188d |  | constraint finish no earlier than 2023-04-03 → finish no earlier than 2023-04-09; resources Ervin Brosas → none |
| 28 | Employee Lookup | 2023-04-04 → 2023-04-11 (+7d) | 2023-04-09 → 2023-04-16 (+7d) |  |  | 195d → 188d |  | constraint start no earlier than 2023-04-04 → finish no earlier than 2023-04-16; resources Ervin Brosas → none |
| 29 | Equipment Lookup | 2023-04-10 → 2023-04-17 (+7d) | 2023-04-13 → 2023-04-20 (+7d) |  |  | 195d → 188d |  | constraint none → finish no earlier than 2023-04-16; resources Ervin Brosas → none |
| 30 | Upload Attachment Management | 2023-04-16 → 2023-04-23 (+7d) | 2023-04-19 → 2023-04-27 (+8d) | 4d → 5d |  | 194d → 187d |  | constraint start no earlier than 2023-04-16 → start no earlier than 2023-04-23; resources Ervin Brosas → none |
| 31 | **Report Functions** | 2023-02-23 → 2023-02-26 (+3d) | 2023-03-20 → 2023-03-21 (+1d) |  |  | 203d → 196d |  | resources none → Antony |
| 32 | **Detailed Expense Report** | 2023-02-23 → 2023-02-26 (+3d) | 2023-03-02 → 2023-03-05 (+3d) | 6d → 7d |  | 205d → 198d |  | resources Antony → none |
| 33 | Inquiry Form | 2023-02-23 → 2023-02-26 (+3d) | 2023-02-28 → 2023-03-01 (+1d) |  |  | 205d → 198d |  | constraint start no earlier than 2023-02-12 → start no earlier than 2023-02-26 |
| 34 | Report Document | 2023-03-01 → 2023-03-02 (+1d) | 2023-03-02 → 2023-03-05 (+3d) | 2d → 3d |  | 205d → 198d |  | constraint start no earlier than 2023-02-28 → finish no earlier than 2023-03-05 |
| 35 | **Expenses Report Summary** | 2023-03-05 → 2023-03-06 (+1d) | 2023-03-12 → 2023-03-13 (+1d) |  |  | 204d → 197d |  | resources Antony → none |
| 36 | Inquiry Form | 2023-03-05 → 2023-03-06 (+1d) | 2023-03-08 → 2023-03-09 (+1d) |  |  | 204d → 198d |  |  |
| 37 | Report Document | 2023-03-09 → 2023-03-12 (+3d) | 2023-03-12 → 2023-03-13 (+1d) | 3d → 2d |  | 204d → 197d |  | constraint start no earlier than 2023-03-09 → start no earlier than 2023-03-12 |
| 38 | **Requisition Report** | 2023-03-13 → 2023-03-15 (+2d) | 2023-03-20 → 2023-03-21 (+1d) | 7d → 6d |  | 203d → 196d |  | resources Antony → none |
| 39 | Inquiry Form | 2023-03-13 → 2023-03-15 (+2d) | 2023-03-16 → 2023-03-19 (+3d) |  |  | 204d → 196d |  | constraint start no earlier than 2023-03-12 → finish no earlier than 2023-03-19 |
| 40 | Report Document | 2023-03-19 → 2023-03-20 (+1d) | 2023-03-20 → 2023-03-21 (+1d) |  |  | 203d → 196d |  |  |
| 41 | **Administrative Functions** | 2023-03-21 → 2023-03-22 (+1d) | 2023-04-09 → 2023-04-17 (+8d) | 17d → 23d |  | 203d → 196d |  | resources none → Antony |
| 43 | Equipment Number Assignment | 2023-03-28 → 2023-03-29 (+1d) | 2023-04-02 → 2023-04-03 (+1d) |  |  | 203d → 196d | Requisition Posting/Closure Management → 42 | resources Antony → none |
| 44 | Upload Project Setup | 2023-04-03 → 2023-04-04 (+1d) | 2023-04-09 → 2023-04-10 (+1d) |  |  | 203d → 196d |  | resources Antony → none |
| 50 | Functional Test | 2023-05-02 → 2023-05-18 (+16d) | 2023-05-04 → 2023-05-21 (+17d) |  |  | 177d → 163d |  | constraint start no earlier than 2023-05-02 → start no earlier than 2023-05-18 |
| 51 | Load Test | 2023-05-07 → 2023-05-22 (+15d) | 2023-05-08 → 2023-05-23 (+15d) |  |  | 176d → 163d |  |  |
| 52 | System Test | 2023-05-09 → 2023-05-24 (+15d) | 2023-05-10 → 2023-05-25 (+15d) |  |  | 176d → 163d |  |  |
| 53 | Documentation | 2023-05-11 → 2023-05-28 (+17d) | 2023-05-15 → 2023-05-30 (+15d) | 4d → 3d |  | 171d → 158d |  | constraint start no earlier than 2023-05-03 → start no earlier than 2023-05-28 |
| 54 | Deployment & User Acceptance | 2023-05-16 → 2023-05-31 (+15d) | 2023-05-16 → 2023-05-31 (+15d) |  |  | 171d → 158d |  |  |
| 55 | **Service Desk Implementation** | 2023-01-02 → 2023-02-01 (+30d) | 2023-01-02 → 2023-02-01 (+30d) |  |  |  |  |  |
| 56 | R&D | 2023-01-02 → 2023-02-01 (+30d) | 2023-01-02 → 2023-02-01 (+30d) |  |  |  |  |  |
| 57 | Analysis Phase | 2023-01-02 → 2023-02-01 (+30d) | 2023-01-02 → 2023-02-01 (+30d) |  |  |  |  |  |
| 58 | Design Phase | 2023-01-02 → 2023-02-01 (+30d) | 2023-01-02 → 2023-02-01 (+30d) |  |  |  |  |  |
| 59 | Development Phase | 2023-01-02 → 2023-02-01 (+30d) | 2023-01-02 → 2023-02-01 (+30d) |  |  |  |  |  |
| 60 | Testing Phase | 2023-01-02 → 2023-02-01 (+30d) | 2023-01-02 → 2023-02-01 (+30d) |  |  |  |  |  |
| 61 | Documentation | 2023-01-02 → 2023-02-01 (+30d) | 2023-01-02 → 2023-02-01 (+30d) |  |  |  |  |  |
| 62 | Deployment & User Acceptance | 2023-01-02 → 2023-02-01 (+30d) | 2023-01-02 → 2023-02-01 (+30d) |  |  |  |  |  |
| 80 | **Database Projects** |  |  | 282d → 282d? |  |  |  |  |
| 81 | **Database Reporting Dashboard** |  |  | 52d → 52d? |  |  |  |  |
| 96 | **Performance Enhancements** |  |  | 71d → 71d? |  |  |  |  |
| 99 | Analyse and tune excessive CPU usage | 2023-02-22 → 2023-02-23 (+1d) |  |  |  |  |  |  |
| 104 | **SQL Server Upgrade to 2019** |  |  | 67d → 67d? |  |  |  |  |
| 106 | **Prepare the production environment** |  |  | 24d → 24d? |  |  |  |  |
| 116 | **Prepare the standby environment** |  |  | 17d → 17d? |  |  |  |  |
| 123 | **Go LIVE** |  |  | 4d → 4d? |  |  |  |  |
| 130 | **Failover / Switchover of Database** |  |  | 282d → 282d? |  |  |  |  |
| 135 | **Backup Management and Restoration Tests** |  |  | 282d → 282d? |  |  |  |  |
| 136 | **Phase 1 [Q2]** |  |  | 71d → 71d? |  |  |  |  |
| 145 | **Phase 3 [Q4]** |  |  | 67d → 67d? |  |  |  |  |
| 150 | **Phase 4 [Q4]** |  |  | 67d → 67d? |  |  |  |  |
| 155 | **Infrastructure Projects** |  | 2023-04-16 → 2023-04-30 (+14d) | 85d → 97d | 2% → 4% | 197d → 185d |  |  |
| 161 | **Network Switch replacement** |  |  |  | 10% → 41% |  |  |  |

| ID | Task | Start | Finish | Complete | Total float |
| --- | --- | --- | --- | --- | --- |
| 162 | Admin departments |  |  | 30% → 40% |  |
| 164 | Plant area | 2023-01-25 A |  | 0% → 15% | 260d → 262d |
| 165 | Foil Mill Area | 2023-01-27 A | 2023-01-29 A | 0% → 100% | 260d → none |
